# Cronograma

Schedule from MS Project, 2015-05-26 to 2015-06-25, status date 2015-05-26.
Microsoft

## Calendars

- Padrão: Mon-Fri 09:00-12:00, 13:00-18:00; Sat-Sun off.

## Resources

| Resource |
| --- |
| Líder de Operação |
| Mídias sociais/Conteúdo |
| Mídias sociais/Monitoramento |
| GP |
| Criação |
| Financeiro/Comercial |
| Planejamento |
| Mídia |

## Schedule

| ID | WBS | Task | Duration | Start | Finish | Predecessors | Total slack | Free slack | Resources | Work |
| --- | --- | --- | --- | --- | --- | --- | --- | --- | --- | --- |
| 1 | 1 | **Projeto - Proposta Mídias sociais TAM** | 23d | 2015-05-26 09:00 | 2015-06-25 18:00 |  | 0d |  |  | 460.8h |
| 2 | 1.1 | **Entendimento do Briefing** | 3d | 2015-05-26 09:00 | 2015-05-28 18:00 |  | 0d |  |  | 24h |
| 3 | 1.1.1 | Definição das áreas envolvidas | 0.5d | 2015-05-26 09:00 | 2015-05-26 14:00 |  | 0d |  | Líder de Operação | 4h |
| 4 | 1.1.2 | Resumo do Briefing | 1d | 2015-05-26 14:00 | 2015-05-27 14:00 | 3 | 0d |  | Líder de Operação | 8h |
| 5 | 1.1.3 | Definição da demanda | 0.5d | 2015-05-27 14:00 | 2015-05-27 18:00 | 4 | 0d |  | Líder de Operação | 4h |
| 6 | 1.1.4 | Análise de viabilidade do projeto | 1d | 2015-05-28 09:00 | 2015-05-28 18:00 | 5 | 0d |  | GP | 8h |
| 7 | 1.2 | **Escopo técnico** | 8d | 2015-05-29 09:00 | 2015-06-09 18:00 |  | 0d |  |  | 152h |
| 8 | 1.2.1 | **Descrição da produção de conteúdo de MS** | 3d | 2015-06-01 09:00 | 2015-06-03 18:00 |  | 3d |  |  | 24h |
| 9 | 1.2.1.1 | Quantidade de posts a serem produzidos | 2d | 2015-06-01 09:00 | 2015-06-02 18:00 | 2, 43 | 3d | 0d | Mídias sociais/Conteúdo | 16h |
| 10 | 1.2.1.2 | Quantidade de horas por posts | 1d | 2015-06-03 09:00 | 2015-06-03 18:00 | 9 | 3d |  | Mídias sociais/Conteúdo | 8h |
| 11 | 1.2.2 | **Descrição do monitoramento de MS** | 4d | 2015-05-29 09:00 | 2015-06-03 18:00 |  | 3d |  |  | 48h |
| 12 | 1.2.2.1 | Definição de termos de pesquisa | 3d | 2015-06-01 09:00 | 2015-06-03 18:00 | 2, 43 | 3d |  | Mídias sociais/Monitoramento | 24h |
| 13 | 1.2.2.2 | Definição de volume | 2d | 2015-05-29 09:00 | 2015-06-01 18:00 | 2 | 4d | 0d | Mídias sociais/Monitoramento | 16h |
| 14 | 1.2.2.3 | Quantidade de horas por volume | 1d | 2015-06-02 09:00 | 2015-06-02 18:00 | 13 | 4d |  | Mídias sociais/Monitoramento | 8h |
| 15 | 1.2.3 | **Descrição do planejamento de MS** | 3d | 2015-06-01 09:00 | 2015-06-03 18:00 |  | 3d |  |  | 24h |
| 16 | 1.2.3.1 | Definição da periodicidade das entregas | 2d | 2015-06-01 09:00 | 2015-06-02 18:00 | 2, 43 | 3d | 0d | Planejamento | 16h |
| 17 | 1.2.3.2 | Quantidade de horas de planejamento | 1d | 2015-06-03 09:00 | 2015-06-03 18:00 | 16 | 3d |  | Planejamento | 8h |
| 18 | 1.2.4 | **Descrição do plano de MS** | 6d | 2015-06-01 09:00 | 2015-06-08 18:00 |  | 0d |  |  | 48h |
| 19 | 1.2.4.1 | Definição das mídias pagas | 5d | 2015-06-01 09:00 | 2015-06-05 18:00 | 2, 43 | 0d |  | Mídia | 40h |
| 20 | 1.2.4.2 | Quantidade de horas dos profissionais de MS | 1d | 2015-06-08 09:00 | 2015-06-08 18:00 | 19 | 0d |  | Mídia | 8h |
| 21 | 1.2.5 | Elaboração do escopo técnico | 1d | 2015-06-09 09:00 | 2015-06-09 18:00 | 8, 11, 15, 18 | 0d |  | GP | 8h |
| 22 | 1.3 | **Proposta comercial** | 4.5d | 2015-06-10 09:00 | 2015-06-16 14:00 |  | 7.5d |  |  | 56h |
| 23 | 1.3.1 | Compilação das horas do escopo técnico | 0.5d | 2015-06-10 09:00 | 2015-06-10 14:00 | 7 | 7.5d | 0d | GP | 4h |
| 24 | 1.3.2 | Precificação das horas | 2d | 2015-06-10 14:00 | 2015-06-12 14:00 | 23 | 7.5d | 0d | Financeiro/Comercial | 16h |
| 25 | 1.3.3 | Análise de risco comercial da solução | 0.5d | 2015-06-12 14:00 | 2015-06-12 18:00 | 24 | 7.5d | 0d | Financeiro/Comercial | 4h |
| 26 | 1.3.4 | Definição da necessidade de recursos | 0.5d | 2015-06-10 14:00 | 2015-06-10 18:00 | 23 | 10d | 2.5d | Financeiro/Comercial | 4h |
| 27 | 1.3.5 | Definição da margem comercial | 0.5d | 2015-06-15 09:00 | 2015-06-15 14:00 | 25 | 7.5d | 0d | Financeiro/Comercial | 4h |
| 28 | 1.3.6 | Elaboração da proposta comercial | 1d | 2015-06-15 14:00 | 2015-06-16 14:00 | 23, 24, 25, 26, 27 | 7.5d |  | Financeiro/Comercial; Líder de Operação; GP | 24h |

| ID | WBS | Task | Duration | Start | Finish | Predecessors | Total slack | Free slack | Resources | Work |
| --- | --- | --- | --- | --- | --- | --- | --- | --- | --- | --- |
| 29 | 1.4 | **Apresentação** | 18d | 2015-06-01 09:00 | 2015-06-24 18:00 |  | 0d |  |  | 184h |
| 30 | 1.4.1 | **Vídeo demo** | 6d | 2015-06-10 09:00 | 2015-06-17 18:00 |  | 0d |  |  | 56h |
| 31 | 1.4.1.1 | Definição do roteiro | 1d | 2015-06-10 09:00 | 2015-06-10 18:00 | 7 | 0d |  | Criação; Mídias sociais/Conteúdo | 16h |
| 32 | 1.4.1.2 | Elaboração do vídeo | 5d | 2015-06-11 09:00 | 2015-06-17 18:00 | 31 | 0d |  | Criação | 40h |
| 33 | 1.4.2 | **Definição do layout** | 3.5d | 2015-06-01 09:00 | 2015-06-04 14:00 |  | 9.5d |  |  | 28h |
| 34 | 1.4.2.1 | Escolha da identidade visual | 0.5d | 2015-06-01 09:00 | 2015-06-01 14:00 | 43 | 9.5d | 0d | Criação | 4h |
| 35 | 1.4.2.2 | Execução do layout | 3d | 2015-06-01 14:00 | 2015-06-04 14:00 | 34 | 9.5d |  | Criação | 24h |
| 36 | 1.4.3 | Elaboração da apresentação | 2d | 2015-06-18 09:00 | 2015-06-19 18:00 | 30, 33, 7 | 0d |  | Criação | 16h |
| 37 | 1.4.4 | Revisão da apresentação final | 0.5d | 2015-06-22 09:00 | 2015-06-22 14:00 | 36 | 0d |  | Criação; GP; Líder de Operação; Mídia; Mídias sociais/Conteúdo; Mídias sociais/Monitoramento; Planejamento | 28h |
| 38 | 1.4.5 | Ajustes/Correções da apresentação final | 0.5d | 2015-06-22 14:00 | 2015-06-22 18:00 | 37 | 0d |  | Criação | 4h |
| 39 | 1.4.6 | Ensaio da apresentação | 0.5d | 2015-06-23 09:00 | 2015-06-23 14:00 | 38 | 0d |  | Líder de Operação; Planejamento | 8h |
| 40 | 1.4.7 | Aprovação da apresentação | 0.5d | 2015-06-23 14:00 | 2015-06-23 18:00 | 39 | 0d |  | Criação; GP; Líder de Operação; Mídia; Mídias sociais/Conteúdo; Mídias sociais/Monitoramento; Planejamento | 28h |
| 41 | 1.4.8 | Realização da apresentação | 1d | 2015-06-24 09:00 | 2015-06-24 18:00 | 40 | 0d |  | Financeiro/Comercial; Planejamento | 16h |
| 42 | 1.5 | **Gerenciamento do projeto** | 20d | 2015-05-29 09:00 | 2015-06-25 18:00 |  | 0d |  |  | 44.8h |
| 43 | 1.5.1 | Kick off | 1d | 2015-05-29 09:00 | 2015-05-29 18:00 | 2 | 0d |  | GP | 8h |
| 44 | 1.5.2 | Planejamento | 1d | 2015-06-01 09:00 | 2015-06-01 18:00 | 43 | 18d |  | GP | 8h |
| 45 | 1.5.3 | Análise de risco | 1d | 2015-06-01 09:00 | 2015-06-01 18:00 | 43 | 18d |  | GP | 8h |
| 46 | 1.5.4 | Encerramento | 1d | 2015-06-25 09:00 | 2015-06-25 18:00 | 41 | 0d |  | GP | 8h |
| 47 | 1.5.5 | **Controle (diário)** | 0.8d | 2015-06-01 09:00 | 2015-06-01 16:24 |  | 18.2d |  |  | 12.8h |
| 48 | 1.5.5.1 | Reunião diária para FUP - 01/06 | 0.2d | 2015-06-01 09:00 | 2015-06-01 10:36 | 2, 43 | 18.2d | 0d | GP | 1.6h |
| 49 | 1.5.5.2 | Report diário - 01/06 | 0.2d | 2015-06-01 09:00 | 2015-06-01 10:36 | 2, 43 | 18.2d | 0d | GP | 1.6h |
| 50 | 1.5.5.3 | Reunião diária para FUP - 02/06 | 0.2d | 2015-06-01 10:36 | 2015-06-01 13:12 | 48 | 18.2d | 0d | GP | 1.6h |
| 51 | 1.5.5.4 | Report diário - 02/06 | 0.2d | 2015-06-01 10:36 | 2015-06-01 13:12 | 49 | 18.2d | 0d | GP | 1.6h |
| 52 | 1.5.5.5 | Reunião diária para FUP - 03/06 | 0.2d | 2015-06-01 13:12 | 2015-06-01 14:48 | 50 | 18.2d | 0d | GP | 1.6h |
| 53 | 1.5.5.6 | Report diário - 03/06 | 0.2d | 2015-06-01 13:12 | 2015-06-01 14:48 | 51 | 18.2d | 0d | GP | 1.6h |
| 54 | 1.5.5.7 | Reunião diária para FUP - 04/06 | 0.2d | 2015-06-01 14:48 | 2015-06-01 16:24 | 52 | 18.2d |  | GP | 1.6h |
| 55 | 1.5.5.8 | Report diário - 04/06 | 0.2d | 2015-06-01 14:48 | 2015-06-01 16:24 | 53 | 18.2d |  | GP | 1.6h |
